# Artificial consciousness project

Schedule from GanttProject, 2015-06-01 to 2016-12-30.
IU

## Calendars

- Project calendar: Mon-Fri working; Sat-Sun off.

## Schedule

| ID | WBS | Task | Duration | Start | Finish | Predecessors |
| --- | --- | --- | --- | --- | --- | --- |
| 1 | 1 | Team forming | 20d | 2015-06-01 | 2015-06-26 |  |
| 2 | 2 | **Theoretical model of consciousness** | 380d | 2015-06-29 | 2016-12-09 | 1 |
| 3 | 2.1 | Scientific sources review | 60d | 2015-06-29 | 2015-09-18 |  |
| 4 | 2.2 | Analysis | 40d | 2015-09-21 | 2015-11-13 | 3 |
| 5 | 2.3 | Model development | 40d | 2015-11-16 | 2016-01-08 | 4 |
| 6 | 2.4 | Prototype version 1 | 60d | 2016-01-11 | 2016-04-01 | 5 |
| 7 | 2.5 | Testing and experimenting | 20d | 2016-04-04 | 2016-04-29 | 6 |
| 8 | 2.6 | Analysis of results | 20d | 2016-05-02 | 2016-05-27 | 7 |
| 9 | 2.7 | Model update | 30d | 2016-05-30 | 2016-07-08 | 8 |
| 10 | 2.8 | Prototype version 2 | 60d | 2016-07-11 | 2016-09-30 | 9 |
| 11 | 2.9 | Testing and experiments | 30d | 2016-10-03 | 2016-11-11 | 10 |
| 12 | 2.10 | Analysis of results | 20d | 2016-11-14 | 2016-12-09 | 11 |
| 13 | 3 | **NEUCOGAR** | 350d | 2015-06-29 | 2016-10-28 | 1 |
| 14 | 3.1 | Neuromodulation Architecture specification | 1d | 2015-06-29 | 2015-06-29 |  |
| 15 | 3.2 | **Dopamine** | 110d | 2015-06-29 | 2015-11-27 |  |
| 16 | 3.2.1 | Basal ganglia simple model implementation | 20d | 2015-06-29 | 2015-07-24 |  |
| 17 | 3.2.2 | Basal ganglia with extended feedback loops | 30d | 2015-07-27 | 2015-09-04 | 16 |
| 18 | 3.2.3 | Basal ganglia with feedback loops and realistic number of neurons | 60d | 2015-09-07 | 2015-11-27 | 17 |
| 19 | 3.3 | **Serotonin** | 110d | 2015-11-30 | 2016-04-29 | 15 |
| 20 | 3.3.1 | Serotonin neuron/synapse | 30d | 2015-11-30 | 2016-01-08 |  |
| 21 | 3.3.2 | Serotonin pathway reduced number of neurons | 20d | 2016-01-11 | 2016-02-05 | 20 |
| 22 | 3.3.3 | Serotonin pathway relistic scale | 60d | 2016-02-08 | 2016-04-29 | 21 |
| 23 | 3.4 | **Noradrenaline** | 130d | 2016-05-02 | 2016-10-28 | 19 |
| 24 | 3.4.1 | Noradrenaline neuron/synapse model | 20d | 2016-05-02 | 2016-05-27 |  |
| 25 | 3.4.2 | Noradrenaline neuron/synapse | 30d | 2016-05-30 | 2016-07-08 | 24 |
| 26 | 3.4.3 | Noradrenaline projections reduced number of neurons | 20d | 2016-07-11 | 2016-08-05 | 25 |
| 27 | 3.4.4 | Noradrenaline projections realistic scales | 60d | 2016-08-08 | 2016-10-28 | 26 |

| ID | WBS | Task | Duration | Start | Finish | Predecessors |
| --- | --- | --- | --- | --- | --- | --- |
| 28 | 4 | **Cortical column topology** | 180d | 2015-06-29 | 2016-03-04 | 1 |
| 29 | 4.1 | Filetering | 30d | 2015-06-29 | 2015-08-07 |  |
| 30 | 4.2 | Clastering | 60d | 2015-08-10 | 2015-10-30 | 29 |
| 31 | 4.3 | Spikes casuality | 90d | 2015-11-02 | 2016-03-04 | 30 |
| 32 | 5 | Publications | 255d | 2016-01-11 | 2016-12-30 | 1, 5 |
